# Сетевая модель проекта

Schedule from MS Project, 2015-02-01 to 2015-05-21, costs in р..

## Calendars

- Standard: Mon-Fri 08:00-12:00, 13:00-17:00; Sat-Sun off. Exceptions (off unless hours are given): 2015-02-23 (23 февраля), 2015-03-07 to 2015-03-09 (8 марта), 2015-05-01 (Праздник весны и труда), 2015-05-09 to 2015-05-11 (День победы).

## Resources

| Resource | Rate | Cost per use |
| --- | --- | --- |
| Ведущий программист | 637.5 |  |
| Программист | 475 |  |
| Моноблок Lenovo IdeaCentre B50-30 1 |  | 48900 |
| Моноблок Lenovo IdeaCentre B50-30 2 |  | 48900 |
| Отчисления на заработную плату |  | 193451 |
| Накладные расходы |  | 386902 |
| Офис на Партизанской |  | 58800 |

## Schedule

| ID | WBS | Task | Type | Duration | Start | Finish | Predecessors | Total slack | Resources | Work | Cost |
| --- | --- | --- | --- | --- | --- | --- | --- | --- | --- | --- | --- |
| 1 | 1 | **Система построения велосипденых маршрутов** |  | 74.38d | 2015-02-01 | 2015-05-21 |  | 0d |  | 1154h | 1,381,791.25 |
| 2 | 1.1 | Начало проекта | milestone | 0h | 2015-02-01 | 2015-02-01 |  | 0d | Моноблок Lenovo IdeaCentre B50-30 1; Моноблок Lenovo IdeaCentre B50-30 2; Отчисления на заработную плату; Накладные расходы; Офис на Партизанской |  | 736,953.75 |
| 3 | 1.2 | **Анализ и проектирование** |  | 26d | 2015-02-02 | 2015-03-11 |  | 0d |  | 380h | 214,300 |
| 4 | 1.2.1 | Анализ предметной области |  | 72h | 2015-02-02 | 2015-02-12 | 2 | 0d | Ведущий программист | 72h | 45,900 |
| 5 | 1.2.2 | Выбор средств реализации работы с картой дорог |  | 36h | 2015-02-02 | 2015-02-06 | 2 | 21.5d | Программист | 36h | 17,100 |
| 6 | 1.2.3 | Построение архитектуры |  | 64h | 2015-02-13 | 2015-02-25 | 4 | 0d | Ведущий программист; Программист | 128h | 71,200 |
| 7 | 1.2.4 | Проектирование и наполнение баз данных |  | 72h | 2015-02-26 | 2015-03-11 | 6 | 0d | Ведущий программист; Программист | 144h | 80,100 |
| 8 | 1.3 | **Программирование** |  | 18.5d | 2015-03-12 | 2015-04-07 | 3 | 0d |  | 296h | 164,650 |
| 9 | 1.3.1 | Реализация построения маршрутов |  | 56h | 2015-03-12 | 2015-03-20 |  | 0d | Ведущий программист; Программист | 112h | 62,300 |
| 10 | 1.3.2 | Реализация отображения маршрутов на карте |  | 48h | 2015-03-23 | 2015-03-30 | 9 | 0d | Ведущий программист; Программист | 96h | 53,400 |
| 11 | 1.3.3 | Реализация пользовательского интерфейса |  | 24h | 2015-03-31 | 2015-04-02 | 10 | 0d | Ведущий программист; Программист | 48h | 26,700 |
| 12 | 1.3.4 | Объединение компонентов в единую систему |  | 20h | 2015-04-03 | 2015-04-07 | 11 | 0d | Ведущий программист; Программист | 40h | 22,250 |
| 13 | 1.4 | **Тестирование и написание документации** |  | 24.38d | 2015-04-07 | 2015-05-13 | 12 | 0d |  | 390h | 216,937.5 |
| 14 | 1.4.1 | Тестирование и отладка |  | 150h | 2015-04-07 | 2015-05-05 |  | 0d | Ведущий программист; Программист | 300h | 166,875 |
| 15 | 1.4.2 | Написание документации |  | 45h | 2015-05-05 | 2015-05-13 | 14 | 0d | Ведущий программист; Программист | 90h | 50,062.5 |
| 16 | 1.5 | **Внедрение** |  | 5.5d | 2015-05-13 | 2015-05-21 | 13 | 0d |  | 88h | 48,950 |
| 17 | 1.5.1 | Развертывание приложения на сервере |  | 4h | 2015-05-13 | 2015-05-14 |  | 0d | Ведущий программист; Программист | 8h | 4,450 |
| 18 | 1.5.2 | Опытная эксплуатация |  | 40h | 2015-05-14 | 2015-05-21 | 17 | 0d | Ведущий программист; Программист | 80h | 44,500 |
| 19 | 1.6 | Окночание проекта | milestone | 0h | 2015-05-21 | 2015-05-21 | 16 | 0d |  |  |  |
